# plan

How a schedule from MS Project changed from version to version. A marks actual dates.

## Version 1 (saved 2010-05-16)

Note of the change: first draft of interim report

| ID | Task | Duration | Start | Finish | Predecessors | Total float | Constraint |
| --- | --- | --- | --- | --- | --- | --- | --- |
| 1 | Set up of source control and continuous integration | 1d | 2010-06-15 | 2010-06-15 |  | 1d |  |
| 2 | Implementation of rule engine | 1w | 2010-06-16 | 2010-06-22 | 1 | 1d |  |
| 3 | Front end for tagger | 3d | 2010-06-23 | 2010-06-25 | 2 | 1d |  |
| 4 | Creation of rule set for recognition | 2w | 2010-06-28 | 2010-07-09 | 2 | 31d |  |
| 5 | Creation of rule set for normalisation | 2w | 2010-07-12 | 2010-07-23 | 2 | 21d |  |
| 6 | Implementation of an SVM approach | 2w | 2010-07-26 | 2010-08-06 | 3 | 11d |  |
| 7 | Implementation of a rule learning approach | 2w | 2010-08-09 | 2010-08-20 | 3 | 1d |  |
| 8 | Evaluation of system against TERN data | 3d | 2010-08-23 | 2010-08-25 | 4, 5, 6, 7 | 4d |  |
| 9 | Evaluation of system against TempEval-2 data | 3d | 2010-08-26 | 2010-08-30 | 4, 5, 6, 7 | 1d |  |
| 10 | Hand in | 0d | 2010-09-01 | 2010-09-01 |  | 0d | start no earlier than 2010-09-01 |

## Version 2 (saved 2010-06-14)

Note of the change: Add dissertation document

Last finish stays 2010-09-01.

Changed:

| ID | Task | Start | Complete |
| --- | --- | --- | --- |
| 1 | Set up of source control and continuous integration | 2010-06-15 A | 0% → 75% |

## Version 3 (data date 2010-06-21, saved 2010-06-21)

Note of the change: Update project status

Last finish stays 2010-09-01.

Changed:

| ID | Task | Start | Complete | Total float |
| --- | --- | --- | --- | --- |
| 1 | Set up of source control and continuous integration |  | 75% → 95% | 1d → 2.25d |
| 2 | Implementation of rule engine | 2010-06-16 A | 0% → 25% |  |

## Version 4 (data date 2010-06-21, saved 2010-06-22)

Note of the change: Update project timescale

Last finish stays 2010-09-01.

Changed:

| ID | Task | Complete |
| --- | --- | --- |
| 2 | Implementation of rule engine | 25% → 50% |

## Version 5 (data date 2010-06-21, saved 2010-06-30)

Note of the change: update project status

Last finish stays 2010-09-01.

Changed:

| ID | Task | Complete |
| --- | --- | --- |
| 2 | Implementation of rule engine | 50% → 85% |

## Version 6 (data date 2010-06-21, saved 2010-07-12)

Note of the change: update project status

Last finish stays 2010-09-01.

Changed:

| ID | Task | Start | Complete |
| --- | --- | --- | --- |
| 3 | Front end for tagger | 2010-06-23 A | 0% → 65% |

## Version 7 (data date 2010-06-21, saved 2010-07-15)

Note of the change: Update project plan

Last finish stays 2010-09-01. Complete tasks 0 → 2.

Changed:

| ID | Task | Finish | Complete | Total float |
| --- | --- | --- | --- | --- |
| 1 | Set up of source control and continuous integration | 2010-06-15 A | 95% → 100% | 2.25d → none |
| 3 | Front end for tagger | 2010-06-25 A | 65% → 100% | 1d → none |

## Version 8 (data date 2010-06-21, saved 2010-07-16)

Note of the change: Start with some recognition rules

Last finish stays 2010-09-01.

Changed:

| ID | Task | Start | Complete |
| --- | --- | --- | --- |
| 2 | Implementation of rule engine |  | 85% → 90% |
| 4 | Creation of rule set for recognition | 2010-06-28 A | 0% → 20% |

## Version 9 (data date 2010-06-21, saved 2010-07-20)

Note of the change: Complete basic recognition rules

Last finish stays 2010-09-01.

Changed:

| ID | Task | Complete |
| --- | --- | --- |
| 4 | Creation of rule set for recognition | 20% → 75% |

## Version 10 (data date 2010-06-21, saved 2010-07-26)

Note of the change: update status

Last finish stays 2010-09-01.

Changed:

| ID | Task | Complete |
| --- | --- | --- |
| 4 | Creation of rule set for recognition | 75% → 90% |

## Version 11 (data date 2010-06-21, saved 2010-07-28)

Note of the change: finish conversion of recognition rules

Last finish stays 2010-09-01.

Changed:

| ID | Task | Complete |
| --- | --- | --- |
| 4 | Creation of rule set for recognition | 90% → 95% |

## Version 12 (data date 2010-06-21, saved 2010-07-29)

Note of the change: recognition rule translation done!

Last finish stays 2010-09-01. Complete tasks 2 → 3.

Changed:

| ID | Task | Finish | Complete | Total float |
| --- | --- | --- | --- | --- |
| 4 | Creation of rule set for recognition | 2010-07-09 A | 95% → 100% | 31d → none |

## Version 13 (data date 2010-06-21, saved 2010-08-02)

Note of the change: handful more rule conversions

Last finish stays 2010-09-01. Complete tasks 3 → 4.

Removed: 6 Implementation of an SVM approach; 7 Implementation of a rule learning approach; 8 Evaluation of system against TERN data; 9 Evaluation of system against TempEval-2 data

Changed:

| ID | Task | Start | Finish | Duration | Complete | Total float | Other |
| --- | --- | --- | --- | --- | --- | --- | --- |
| 2 | Implementation of rule engine |  | 2010-06-22 → 2010-06-29 A (+7d) | 1w → 2w | 90% → 100% | 21d → none | constraint none → finish no earlier than 2010-06-29 |
| 3 | Front end for tagger | 2010-06-23 A → 2010-06-30 A (+7d) | 2010-06-25 A → 2010-07-15 A (+20d) | 3d → 12d |  |  | constraint none → finish no earlier than 2010-07-15 |
| 4 | Creation of rule set for recognition | 2010-06-28 A → 2010-07-16 A (+18d) | 2010-07-09 A → 2010-07-29 A (+20d) |  |  |  |  |
| 5 | Creation of rule set for normalisation | 2010-07-12 → 2010-07-30 A (+18d) | 2010-07-23 → 2010-08-19 (+27d) | 2w → 3w | 0% → 25% | 21d → 8d |  |

## Version 14 (data date 2010-06-21, saved 2010-08-05)

Note of the change: more normalisation rule conversion

Last finish stays 2010-09-01.

Changed:

| ID | Task | Complete |
| --- | --- | --- |
| 5 | Creation of rule set for normalisation | 25% → 40% |

## Version 15 (data date 2010-06-21, saved 2010-08-06)

Note of the change: Start on translating time rules

Last finish stays 2010-09-01.

Added:

| ID | Task | Duration | Start | Finish | Constraint | Resources |
| --- | --- | --- | --- | --- | --- | --- |
| 6 | Write-up | 14d | 2010-08-13 | 2010-09-01 | must finish on 2010-09-01 | CN |

Changed:

| ID | Task | Finish | Duration | Complete | Total float |
| --- | --- | --- | --- | --- | --- |
| 5 | Creation of rule set for normalisation | 2010-08-19 → 2010-08-12 (-7d) | 3w → 2w | 40% → 50% | 8d → 14d |

## Version 16 (data date 2010-06-21, saved 2010-08-07)

Note of the change: More fiddling with plan Move more stuff out of root and into subfolders Also remove ISO 8601 time separators, from the TIMEX2 scorer too Add IDs to gutime-time.ruleblock Add more time normalisation rules

Last finish stays 2010-09-01.

Changed:

| ID | Task | Start | Finish | Duration | Complete | Total float |
| --- | --- | --- | --- | --- | --- | --- |
| 5 | Creation of rule set for normalisation |  | 2010-08-12 → 2010-08-11 (-1d) | 2w → 13d | 50% → 60% | 14d → 21d |
| 6 | Write-up | 2010-08-13 → 2010-08-16 (+3d) |  | 14d → 17d |  |  |

## Version 17 (data date 2010-06-21, saved 2010-08-08)

Note of the change: Change compute_offset_base to never return the same day as passed in, always assume we mean next/last (with updated unit tests) Alter mod rules to catch things like "the mid-70s" Add (back) support for sentence level guards Handful of rule bug fixes Final set of time normalisation rules

Last finish stays 2010-09-01.

Changed:

| ID | Task | Complete |
| --- | --- | --- |
| 5 | Creation of rule set for normalisation | 60% → 69% |

## Version 18 (data date 2010-06-21, saved 2010-08-10)

Note of the change: A handful of bug fixes Conversion from GUTime done The code writing part is now largely complete :)

Last finish stays 2010-09-01. Complete tasks 4 → 5.

Changed:

| ID | Task | Finish | Complete | Total float |
| --- | --- | --- | --- | --- |
| 5 | Creation of rule set for normalisation | 2010-08-11 A | 69% → 100% | 21d → none |

## Version 19 (data date 2010-06-21, saved 2010-08-20)

Note of the change: tweak project timeline

Last finish stays 2010-09-01.

Changed:

| ID | Task | Start | Finish | Duration | Complete | Other |
| --- | --- | --- | --- | --- | --- | --- |
| 6 | Write-up | 2010-08-16 A | 2010-09-01 → 2010-08-31 (-1d) | 17d → 16d | 0% → 10% | constraint must finish on 2010-09-01 → finish no earlier than 2010-08-31 |

## Version 20 (data date 2010-06-21, saved 2010-08-24)

Note of the change: First draft of "the system" complete

Last finish stays 2010-09-01.

Changed:

| ID | Task | Complete |
| --- | --- | --- |
| 6 | Write-up | 10% → 35% |

## Version 21 (data date 2010-06-21, saved 2010-08-26)

Note of the change: problem analysis to come

Last finish stays 2010-09-01.

Changed:

| ID | Task | Complete |
| --- | --- | --- |
| 6 | Write-up | 35% → 75% |
